# Schedule 2017-02-17 baseline - Final

Schedule from MS Project, 2025-09-08 to 2026-09-21, status date 2026-03-12, A marks actual dates.

## Calendars

- Standard: Mon-Fri 08:00-12:00, 13:00-17:00; Sat-Sun off. Exceptions (off unless hours are given): 2025-11-27 to 2025-11-28 (Thanksgiving 2025), 2025-12-25 (Christmas 2025), 2026-01-01 (New Year's Day 2026), 2026-05-25 (Memorial Day), 2026-07-03 (Independence Day 2026).

## Resources

| Resource |
| --- |
| Janus |
| ATD |

## Schedule

| ID | WBS | Task | Type | Duration | Start | Finish | Predecessors | Complete | Remaining | Total slack | Free slack | Constraint | Deadline |
| --- | --- | --- | --- | --- | --- | --- | --- | --- | --- | --- | --- | --- | --- |
| 1 | 1 | **GENERAL REQUIREMENTS AND CONDITIONS** |  | 265d | 2025-09-08 A | 2026-09-21 |  | 89% | 28.89d | 0d |  |  |  |
| 2 | 1.1 | Notice to Proceed | milestone | 1d | 2025-09-08 A | 2025-09-08 A |  | 100% |  |  |  | start no earlier than 2025-09-08 |  |
| 3 | 1.2 | DELAY - PERMIT DELAY |  | 32d | 2025-09-09 A | 2025-10-22 A | 2 | 100% |  |  |  |  |  |
| 4 | 1.3 | Obtain Building Permit | milestone | 0d | 2025-10-22 A | 2025-10-22 A | 2, 3 | 100% |  |  |  | start no earlier than 2025-10-22 |  |
| 5 | 1.4 | ACHD ROW Permit | milestone | 0d | 2025-10-29 A | 2025-10-29 A | 4FS+5d | 100% |  |  |  |  |  |
| 6 | 1.5 | Obtain LDIR Approval to Proceed | milestone | 0d | 2025-10-27 A | 2025-10-27 A | 4FS+3d | 100% |  |  |  |  |  |
| 7 | 1.6 | Receive CAD Base Files from Public Storage |  | 10d | 2025-09-09 A | 2025-09-22 A | 2 | 100% |  |  |  | finish no earlier than 2024-08-31 |  |
| 8 | 1.7 | Procure Early Work Subcontractors |  | 5d | 2025-09-09 A | 2025-09-15 A | 2 | 100% |  |  |  |  |  |
| 9 | 1.8 | Procure Remaining Subcontractors |  | 20d | 2025-09-16 A | 2025-10-13 A | 8 | 100% |  |  |  |  |  |
| 10 | 1.9 | Submittals (SWPPP/NOI) |  | 10d | 2025-09-16 A | 2025-09-29 A | 8 | 100% |  |  |  |  |  |
| 11 | 1.10 | Submittals (SES /Switchgear) |  | 125d | 2025-09-16 A | 2026-03-13 A | 8 | 100% |  |  |  |  |  |
| 12 | 1.11 | Submittals (numerous) |  | 90d | 2025-10-14 A | 2026-02-20 | 9 | 95% | 4.5d | 84d | 81d |  |  |
| 13 | 1.12 | PUBLIC STORAGE Fab/Delv Framing & Panels BLDG B |  | 40d | 2025-10-23 A | 2025-12-19 | 2, 4 | 50% | 20d | 192d | 0d |  |  |
| 14 | 1.13 | PUBLIC STORAGE Fab/Delv Framing & Panels BLDG A |  | 40d | 2025-11-06 A | 2026-01-06 | 13SS+10d | 25% | 30d | 42d |  |  |  |
| 15 | 1.14 | Procure SES's/Switchgears (6 mos ~ 130 WD) |  | 56d | 2025-11-03 A | 2026-01-23 A | 11 | 100% |  |  |  |  |  |
| 16 | 1.15 | Light Fixture Submittal Review and Approval |  | 10d | 2026-01-26 A | 2026-02-06 A |  | 100% |  |  |  | start no earlier than 2026-01-26 |  |
| 17 | 1.16 | Light Fixture Package Alternate - Fab and Deliver |  | 10d | 2026-02-09 A | 2026-02-20 A | 16 | 100% |  |  |  | finish no earlier than 2026-02-20 |  |
| 18 | 1.17 | Fire Sprinkler Design and Approval |  | 78d | 2025-10-14 A | 2026-02-04 A | 2, 9 | 100% |  |  |  |  |  |
| 19 | 1.18 | Fire Alarm System Design and Approval |  | 40d | 2025-10-14 A | 2025-12-10 A | 2, 9 | 100% |  |  |  |  |  |
| 20 | 1.19 | ASPHALT BATCH PLANT SHUTDOWN |  | 70d | 2025-11-17 A | 2026-02-26 A |  | 100% |  |  |  | must start on 2025-11-17 |  |
| 21 | 1.20 | TWENTY WORKING DAYS OF WEATHER DELAY |  | 10d | 2026-09-08 | 2026-09-21 | 114, 117, 140, 194, 197, 219, 33, 71, 76, 74, 75, 34, 109, 110, 118, 119, 126, 127, 189, 190, 198, 199, 193, 202, 207, 210, 206, 115, 122, 130, 32, 29 |  |  | -38d | 0d |  |  |
| 22 | 1.21 | WEATHER DELAY - Rain and High Winds - Imapct SOG B |  | 2d | 2025-12-17 A | 2025-12-18 A |  | 100% |  |  |  | start no earlier than 2025-12-17 |  |
| 23 | 1.22 | WEATHER DELAY - Rain - Impact SOG B |  | 1d | 2025-12-22 A | 2025-12-22 A |  | 100% |  |  |  | start no earlier than 2025-12-22 |  |
| 24 | 1.23 | WEATHER DELAY - Rain - Impact SOG B |  | 3d | 2026-01-08 A | 2026-01-12 A | 89FF, 88 | 100% |  |  |  |  |  |
| 25 | 1.24 | WEATHER DELAY - Rain - Impact Footing Bldg A |  | 2d | 2026-02-17 A | 2026-02-18 A |  | 100% |  |  |  | finish no earlier than 2026-02-18 |  |
| 26 | 1.25 | WEATHER DELAY - Rain - Impact Footing Bldg A |  | 2d | 2026-02-24 A | 2026-02-25 A |  | 100% |  |  |  | start no earlier than 2026-02-24 |  |
| 27 | 1.26 | Substantial Completion | milestone | 0d | 2026-09-21 | 2026-09-21 | 114, 117, 140, 194, 197, 219, 33, 71, 76, 74, 75, 34, 109, 110, 118, 119, 126, 127, 189, 190, 198, 199, 193, 202, 207, 210, 206, 115, 122, 130, 32, 21, 79 |  |  | -38d | 0d | start no earlier than 2026-07-29 | 2026-07-29 |
| 28 | 1.27 | Clean Up and Project Close Out |  | 5d | 2026-08-27 | 2026-09-02 | 141 |  |  | -38d | 0d |  |  |
| 29 | 1.28 | Demobilize |  | 3d | 2026-09-03 | 2026-09-07 | 28 |  |  | -38d | 0d |  |  |

Notes:
- 3: 9/18: Permit was held up by city review on LDIR. See RR item.

| ID | WBS | Task | Type | Duration | Start | Finish | Predecessors | Complete | Remaining | Total slack | Free slack | Constraint | Resources | Work | Actual work |
| --- | --- | --- | --- | --- | --- | --- | --- | --- | --- | --- | --- | --- | --- | --- | --- |
| 30 | 2 | **SITEWORK** |  | 219d | 2025-09-08 A | 2026-07-17 |  | 51% | 108.37d | 8d |  |  |  | 688h | 528h |
| 31 | 2.1 | **Level of Effort** |  | 131d | 2025-09-08 A | 2026-03-13 |  | 42% | 75.9d | 86d |  |  |  |  |  |
| 32 | 2.1.1 | Construction Staking & Surveying |  | 90d | 2025-09-08 A | 2026-01-16 | 36SS, 8SS | 75% | 22.5d | 91d | 88d |  |  |  |  |
| 33 | 2.1.2 | Inspections and Testing |  | 100d | 2025-09-12 A | 2026-02-13 | 35 |  | 100d | 89d | 86d |  |  |  |  |
| 34 | 2.1.3 | Maintain Erosion Control |  | 120d | 2025-09-23 A | 2026-03-13 | 35 | 50% | 60d | 86d |  |  |  |  |  |
| 35 | 2.1.4 | Erosion Control & SWPP |  | 5d | 2025-09-16 A | 2025-09-22 A | 8 | 100% |  |  |  |  |  |  |  |
| 36 | 2.2 | Mobilization |  | 5d | 2025-09-08 A | 2025-09-15 A | 2 | 100% |  |  |  | start no earlier than 2024-09-09 |  |  |  |
| 37 | 2.3 | Site Demolition (Trees,Sawcut, Asphalt, Base ) | milestone | 0d | 2025-09-08 A | 2025-09-12 A | 36SS, 8 | 100% |  |  |  |  |  |  |  |
| 38 | 2.4 | Clear/Grub & Overlot Grading |  | 12d | 2025-09-08 A | 2025-09-23 A | 37SS, 32SS | 100% |  |  |  |  |  |  |  |
| 39 | 2.5 | Structure Demo (Partial Building & RV Storage ) |  | 5d | 2025-11-03 A | 2025-11-07 A | 36SS | 100% |  |  |  | start no earlier than 2025-09-08 | Janus | 40h | 40h |
| 40 | 2.6 | Re-Mobilization |  | 4d | 2025-10-23 A | 2025-10-28 A | 4 | 100% |  |  |  |  |  |  |  |
| 41 | 2.7 | FRAGNET - CITY PRE-CON & 7 DAY NOTICE |  | 7d | 2025-10-29 A | 2025-11-06 A | 4, 5, 6 | 100% |  |  |  | start no earlier than 2025-10-29 |  |  |  |
| 42 | 2.8 | Site - Water Line Ten Mile Tie-In |  | 2d | 2025-11-08 A | 2025-11-11 A | 5FS+2d, 6, 41 | 100% |  |  |  |  | ATD | 16h | 16h |
| 43 | 2.9 | Work Week Restriction |  | 5d | 2025-11-07 A | 2025-11-13 A | 41 | 100% |  |  |  |  |  |  |  |
| 44 | 2.10 | Site - Sewer Lines and Devices/Ten Mile Tie-In |  | 13d | 2025-11-14 A | 2025-12-04 A | 38, 3, 4, 5, 42FS-6d, 6, 41, 43 | 100% |  |  |  |  | ATD | 104h | 104h |
| 45 | 2.11 | DELAY - GIRR License Agreement Approval to Proceed |  | 6d | 2025-12-05 A | 2025-12-12 A | 44 | 100% |  |  |  |  |  |  |  |
| 46 | 2.12 | DELAY - RFI #14 - GIRR Separation |  | 4d | 2025-12-15 A | 2025-12-18 A | 45 | 100% |  |  |  |  |  |  |  |
| 47 | 2.13 | Storm Drain Lines South |  | 6d | 2025-12-22 A | 2025-12-30 A | 84 | 100% |  |  |  | finish no earlier than 2026-01-09 | ATD | 48h | 48h |
| 48 | 2.14 | Site - Water Line & Fire Lines/Hydrants and Devices Remaining |  | 18d | 2026-01-05 A | 2026-01-28 A | 44, 47 | 100% |  |  |  |  | ATD | 144h | 144h |
| 49 | 2.15 | Site - GIRR Piping & Devices |  | 16d | 2026-01-12 A | 2026-02-02 A | 44, 39, 47, 45, 46, 48SS+5d | 100% |  |  |  |  | ATD | 128h | 128h |
| 50 | 2.16 | TP DELAY - Site - GIRR Box Delivery and Placement |  | 6d | 2026-01-26 A | 2026-02-02 A | 49FF | 100% |  |  |  |  | ATD | 48h | 48h |
| 51 | 2.17 | Complete Utility Lines Tie-ins to Building A |  | 5d | 2026-05-14 | 2026-05-20 | 70, 124, 132, 212, 48 |  |  | 3d | 0d |  |  |  |  |
| 52 | 2.18 | Gravel Road Rough Grade Prep |  | 8d | 2025-12-08 A | 2025-12-17 A | 84SS+2d | 100% |  |  |  |  |  |  |  |
| 53 | 2.19 | **FRAGNET - Site - Drive Aisle Unsuitable Soils** |  | 53d | 2026-02-03 A | 2026-04-16 |  | 71% | 15.5d | 19d |  |  |  |  |  |
| 54 | 2.19.1 | FRAGNET - Site - Drive Aisle Over Ex Unsuitable Soil Identified |  | 1d | 2026-02-03 A | 2026-02-03 A | 49 | 100% |  |  |  |  |  |  |  |
| 55 | 2.19.2 | FRAGNET - Site - Drive Aisle Over Ex Discussion and Confirmation on Solution |  | 2d | 2026-02-04 A | 2026-02-05 A | 54 | 100% |  |  |  |  |  |  |  |
| 56 | 2.19.3 | FRAGNET - Site - Idaho Power - Pivot to Moblize and Peform the UG JT in Drive Aisle |  | 15d | 2026-02-06 A | 2026-02-26 A | 55 | 100% |  |  |  |  |  |  |  |
| 57 | 2.19.4 | FRAGNET - Site - Owner Review of Impact and Discussion with Geo Tech to Identify Alternative Solutions More Econamical |  | 5d | 2026-02-19 A | 2026-02-25 A | 55 | 100% |  |  |  | finish no earlier than 2026-02-25 |  |  |  |
| 58 | 2.19.5 | FRAGNET - Prepare and Submit Pricing for Approval |  | 13d | 2026-02-27 A | 2026-03-17 A |  | 100% |  |  |  |  |  |  |  |
| 59 | 2.19.6 | FRAGNET - Owner Issued CCD 07 Directive for Driveisle and Soft Spots |  | 1d | 2026-03-09 A | 2026-03-09 A | 58SS+6d | 100% |  |  |  |  |  |  |  |
| 60 | 2.19.7 | FRAGNET - Mobilize Crew, Rough Grade Prep, Scarify and Air Dry |  | 1d | 2026-03-20 A | 2026-03-20 | 57SS, 158 | 50% | 0.5d | -30d | 0d |  |  |  |  |
| 61 | 2.19.8 | FRAGNET - Re-Prep, Proof Roll, Confirm Soft Spot Magnitude |  | 1d | 2026-03-23 | 2026-03-23 | 57SS, 158, 60 |  |  | -30d | 0d |  |  |  |  |
| 62 | 2.19.9 | FRAGNET - Site - Partial Soft Spot Repair Examination of Pit Run to Proceed. If failed, provide geo grid per RFI 33 |  | 3d | 2026-03-24 | 2026-03-26 | 57, 61 |  |  | -29d | 0d |  |  |  |  |
| 63 | 2.19.10 | (TOTAL MAGNITUDE, TBD) FRAGNET - Site - Drive Aisle Over Ex Start |  | 1d | 2026-04-09 | 2026-04-09 | 56, 62, 57, 67, 163, 61, 60 |  |  | -38d | 0d |  |  |  |  |
| 64 | 2.19.11 | (TOTAL MAGNITUDE, TBD) FRAGNET - Site - Drive Aisle Over Ex Finish South Bld A |  | 5d | 2026-04-10 | 2026-04-16 | 56, 63 |  |  | -38d | 0d |  |  |  |  |
| 65 | 2.19.12 | (TOTAL MAGNITUDE, TBD) FRAGNET - Site - Drive Aisle Over Ex Finish South Bld B |  | 5d | 2026-04-10 | 2026-04-16 | 56, 63 |  |  | 19d | 4d |  |  |  |  |
| 66 | 2.20 | Site - Idaho Power Boring |  | 2d | 2026-02-26 A | 2026-02-27 A | 56 | 100% |  |  |  |  |  |  |  |
| 67 | 2.21 | Site - Idaho Power Trench, Conduit and Backfill |  | 5d | 2026-03-09 A | 2026-03-13 A | 66 | 100% |  |  |  |  |  |  |  |
| 68 | 2.22 | Site - Idaho Power Transformer Set and Make Live | milestone | 0d | 2026-03-13 A | 2026-03-13 A | 56, 66, 67 | 100% |  |  |  |  |  |  |  |
| 69 | 2.23 | Site - Base Course Asphalt Prep & Flatwork Prep |  | 8d | 2026-04-23 | 2026-05-04 | 172, 65 |  |  | 15d | 12d |  |  |  |  |
| 70 | 2.24 | Storm Drain Lines and Devices - North & South of Buildings |  | 15d | 2026-04-23 | 2026-05-13 | 38, 44, 87, 89, 171 |  |  | 3d | 0d |  | ATD | 120h |  |
| 71 | 2.25 | Gravel Road Finish Grade Prep |  | 5d | 2026-05-14 | 2026-05-20 | 48, 70 |  |  | 21d | 18d |  | ATD | 40h |  |
| 72 | 2.26 | Site Flatwork and Curb and Gutter |  | 15d | 2026-05-21 | 2026-06-11 | 51, 42, 44, 70, 49, 152, 50, 32, 69 |  |  | 3d | 0d |  |  |  |  |
| 73 | 2.27 | Site - Fine Grade Asphalt Prep |  | 3d | 2026-06-12 | 2026-06-16 | 72 |  |  | 3d | 0d |  |  |  |  |
| 74 | 2.28 | Asphalt Paving |  | 2d | 2026-06-17 | 2026-06-18 | 72, 12, 20, 73, 71, 33 |  |  | 3d | 0d |  |  |  |  |
| 75 | 2.29 | Pavement Markings, Signage & Bumpers |  | 2d | 2026-06-19 | 2026-06-22 | 72, 74, 71 |  |  | 16d |  |  |  |  |  |
| 76 | 2.30 | Landscaping and Irrigation |  | 15d | 2026-06-19 | 2026-07-10 | 72, 12, 74 |  |  | 3d |  |  |  |  |  |
| 77 | 2.31 | Site Fencing Chainlink |  | 5d | 2026-06-19 | 2026-06-25 | 71, 74 |  |  | 8d | 0d |  |  |  |  |
| 78 | 2.32 | Site Fencing Vinyl |  | 10d | 2026-06-26 | 2026-07-10 | 71, 74, 77 |  |  | 8d | 0d |  |  |  |  |
| 79 | 2.33 | Site Fencing Rod Iron and Gates |  | 5d | 2026-07-13 | 2026-07-17 | 71, 74, 78 |  |  | 8d |  |  |  |  |  |

Notes:
- 50: As a result of CXT and ATD's submittal delay, the precast boxes were delayed.

| ID | WBS | Task | Type | Duration | Start | Finish | Predecessors | Complete | Remaining | Total slack | Free slack | Constraint | Resources | Work | Actual work |
| --- | --- | --- | --- | --- | --- | --- | --- | --- | --- | --- | --- | --- | --- | --- | --- |
| 80 | 3 | **BUILDING B** |  | 193d | 2025-10-29 A | 2026-08-03 |  | 29% | 137.77d | -13d | 0d |  |  | 784h | 444h |
| 81 | 3.1 | BLDG B Foundation Excavation |  | 6d | 2025-10-29 A | 2025-11-05 A | 38SS+3d, 4, 40, 82FF | 100% |  |  |  | start no earlier than 2025-09-15 | ATD | 48h | 48h |
| 82 | 3.2 | DELAY - BLDG B FOOTING OVER-EX |  | 4d | 2025-10-31 A | 2025-11-05 A |  | 100% |  |  |  | start no earlier than 2025-10-31 | ATD | 32h | 32h |
| 83 | 3.3 | BLDG B SOG Prep |  | 5d | 2025-11-26 A | 2025-12-04 A | 81, 132 | 100% |  |  |  |  | ATD | 40h | 40h |
| 84 | 3.4 | FRAGNET - Bldg B Soft Spot Repair |  | 8d | 2025-12-04 A | 2025-12-15 A |  | 100% |  |  |  | start no earlier than 2025-12-04 |  |  |  |
| 85 | 3.5 | BLDG B Backfill Foundations |  | 18d | 2025-12-15 A | 2026-01-09 A | 87, 88, 89SS, 24 | 100% |  |  |  |  | ATD | 144h | 144h |
| 86 | 3.6 | **CONCRETE WORK** |  | 44d | 2025-11-06 A | 2026-01-12 A |  | 100% |  |  |  |  |  |  |  |
| 87 | 3.6.1 | BLDG B Foundation |  | 14d | 2025-11-06 A | 2025-11-25 A | 81, 82 | 100% |  |  |  |  |  |  |  |
| 88 | 3.6.2 | BLDG B Dampproofing |  | 1d | 2025-11-18 A | 2025-11-26 A | 81, 87 | 100% |  |  |  |  |  |  |  |
| 89 | 3.6.3 | BLDG B Slab On Grade |  | 19d | 2025-12-15 A | 2026-01-12 A | 87, 132, 124FF, 83, 84FF, 22FF, 23FF | 100% |  |  |  |  |  |  |  |
| 90 | 3.6.4 | BLDG B Slab On Grade Complete | milestone | 0d | 2026-01-12 A | 2026-01-12 A | 89, 24 | 100% |  |  |  |  |  |  |  |
| 91 | 3.7 | **STEEL AND METALS** |  | 108.5d | 2026-01-12 A | 2026-06-12 |  | 50% | 54.25d | 2.5d |  |  |  | 320h | 160h |
| 92 | 3.7.1 | Frame & Panel Load Bearing & Shear Walls (JANUS) |  | 20d | 2026-01-12 A | 2026-02-09 A | 89, 13, 39, 24 | 100% |  |  |  |  | Janus | 160h | 160h |
| 93 | 3.7.2 | FRAGNET - Extended Shear Wall Durations (JANUS) |  | 30d | 2026-02-10 A | 2026-03-23 | 92 | 50% | 15d | 0d |  |  |  |  |  |
| 94 | 3.7.3 | Frame & Panel Partition & Corridor Walls (JANUS) |  | 20d | 2026-05-14 | 2026-06-12 | 98, 106, 133, 129 |  |  | 2.5d |  |  | Janus | 160h |  |
| 95 | 3.8 | **WOOD & FRP** |  | 5d | 2026-04-23 | 2026-04-30 |  |  |  | 39.5d |  |  |  |  |  |
| 96 | 3.8.1 | Misc Finish Carpentry |  | 5d | 2026-04-23 | 2026-04-30 | 112 |  |  | 39.5d | 5d |  |  |  |  |
| 97 | 3.9 | **ROOF & SIDING** |  | 78d | 2026-01-30 A | 2026-05-19 |  | 30% | 54.65d | 19d |  |  |  | 200h | 20h |
| 98 | 3.9.1 | Exterior Sheathing | milestone | 0d | 2026-01-30 A | 2026-02-16 A | 92FS-12d, 93FS-12d | 100% |  |  |  |  |  |  |  |
| 99 | 3.9.2 | Weather Barrier Fluid Applied |  | 8d | 2026-02-06 A | 2026-02-19 A | 98FS-5d | 100% |  |  |  |  |  |  |  |
| 100 | 3.9.3 | Weather Barrier Tyvek |  | 10d | 2026-03-04 A | 2026-03-17 A | 98FS-5d | 100% |  |  |  |  |  |  |  |
| 101 | 3.9.4 | CMU Veneer Base Course & Grout |  | 15d | 2026-03-03 A | 2026-04-07 | 98, 100, 99 | 25% | 11.25d | 19d | 0d |  |  |  |  |
| 102 | 3.9.5 | Rigid Insulation Behind CMU |  | 5d | 2026-04-08 | 2026-04-14 | 100, 99, 101 |  |  | 19d | 0d |  |  |  |  |
| 103 | 3.9.6 | Rigid Insulation Behind Metal Panels |  | 3d | 2026-04-15 | 2026-04-17 | 102 |  |  | 31d | 12d |  |  |  |  |
| 104 | 3.9.7 | CMU Veneer Remaining |  | 15d | 2026-04-15 | 2026-05-05 | 101, 102 |  |  | 19d | 0d |  |  |  |  |
| 105 | 3.9.8 | Exterior Metal Panels (JANUS) |  | 10d | 2026-05-06 | 2026-05-19 | 98, 103, 104 |  |  | 19d |  |  | Janus | 80h |  |
| 106 | 3.9.9 | Install Roof & Roof Insulation (JANUS) |  | 15d | 2026-02-25 A | 2026-04-09 | 92, 93 | 17% | 12.5d | 2.5d | 0d |  | Janus | 120h | 20h |
| 107 | 3.9.10 | BLDG B Roofing Complete | milestone | 0d | 2026-04-09 | 2026-04-09 | 106 |  |  | 2.5d | 0d |  |  |  |  |

Notes:
- 98: Lag is 12 days because the shear wall is far enough along to start exterior sheathing by 1/30.

| ID | WBS | Task | Type | Duration | Start | Finish | Predecessors | Complete | Remaining | Total slack | Free slack | Constraint |
| --- | --- | --- | --- | --- | --- | --- | --- | --- | --- | --- | --- | --- |
| 108 | 3.10 | **DOORS & WINDOWS** |  | 20d | 2026-07-07 | 2026-08-03 |  |  |  | -13d | 0d |  |
| 109 | 3.10.1 | F&I Storage Unit Doors (JANUS) |  | 20d | 2026-07-07 | 2026-08-03 | 105, 185, 94 |  |  | -13d | 0d |  |
| 110 | 3.10.2 | F&I HM Doors and Hardware (JANUS) |  | 15d | 2026-07-07 | 2026-07-27 | 109SS, 112 |  |  | -8d | 0d |  |
| 111 | 3.11 | **FINISHES** |  | 30d | 2026-04-09 | 2026-05-21 |  |  |  | 24.5d |  |  |
| 112 | 3.11.1 | Install Gypsum Board |  | 10d | 2026-04-09 | 2026-04-23 | 106, 92, 107, 93 |  |  | 24.5d | 0d |  |
| 113 | 3.11.2 | Flooring Polished Concrete |  | 5d | 2026-04-23 | 2026-04-30 | 112 |  |  | 34.5d | 0d |  |
| 114 | 3.11.3 | FRP / Vinyl Base |  | 5d | 2026-04-30 | 2026-05-07 | 112, 113 |  |  | 34.5d | 0d |  |
| 115 | 3.11.4 | Painting |  | 10d | 2026-05-07 | 2026-05-21 | 114, 96 |  |  | 34.5d | 0d |  |
| 116 | 3.12 | **SPECIALTIES** |  | 23d | 2026-04-23 | 2026-05-27 |  |  |  | 34.5d |  |  |
| 117 | 3.12.1 | Install Misc Equipment & Lockers |  | 20d | 2026-04-23 | 2026-05-21 | 112 |  |  | 37.5d |  |  |
| 118 | 3.12.2 | Bathroom Accessories |  | 2d | 2026-04-30 | 2026-05-04 | 113 |  |  | 50.5d |  |  |
| 119 | 3.12.3 | Building Interior Signage |  | 3d | 2026-05-21 | 2026-05-27 | 115SS+10d |  |  | 34.5d |  |  |
| 120 | 3.13 | **FIRE SPRINKLERS** |  | 50d | 2026-02-23 A | 2026-05-01 |  | 13% | 43.49d | 51d |  |  |
| 121 | 3.13.1 | Fire Sprinkler System Rough In |  | 28d | 2026-02-23 A | 2026-04-10 | 106SS+5d, 18 | 20% | 22.4d | 51d | 0d |  |
| 122 | 3.13.2 | Fire Sprinkler System Trim Out |  | 15d | 2026-04-13 | 2026-05-01 | 121 |  |  | 51d |  |  |
| 123 | 3.14 | **PLUMBING** |  | 114.5d | 2025-11-20 A | 2026-05-05 |  | 16% | 96.18d | 49.5d |  |  |
| 124 | 3.14.1 | Plumbing Rough-in Underground |  | 4d | 2025-11-20 A | 2025-11-25 A | 87SS+5d | 100% |  |  |  |  |
| 125 | 3.14.2 | Drains, Water, Sewer Lines |  | 15d | 2026-04-09 | 2026-04-30 | 106 |  |  | 49.5d | 0d |  |
| 126 | 3.14.3 | Bathroom Fixtures |  | 3d | 2026-04-30 | 2026-05-05 | 112, 113, 125 |  |  | 49.5d | 0d |  |
| 127 | 3.14.4 | Other Plumbing Fixtures |  | 3d | 2026-04-30 | 2026-05-05 | 126SS |  |  | 49.5d |  |  |
| 128 | 3.15 | **HVAC** |  | 30d | 2026-04-09 | 2026-05-21 |  |  |  | 2.5d |  |  |
| 129 | 3.15.1 | HVAC Installation |  | 25d | 2026-04-09 | 2026-05-14 | 106, 107 |  |  | 2.5d | 0d |  |
| 130 | 3.15.2 | HVAC Commisioning & T&B |  | 5d | 2026-05-14 | 2026-05-21 | 129, 136 |  |  | 37.5d |  |  |
| 131 | 3.16 | **ELECTRICAL** |  | 156.5d | 2025-11-20 A | 2026-07-06 |  | 8% | 144.02d | 7.5d |  |  |
| 132 | 3.16.1 | Building Rough-in Underground | milestone | 0d | 2025-11-20 A | 2025-11-25 A | 152 | 100% |  |  |  |  |
| 133 | 3.16.2 | Elect Rough-In |  | 25d | 2026-03-02 A | 2026-04-07 | 106SS+5d | 25% | 18.75d | 29d | 18.5d |  |
| 134 | 3.16.3 | New Service Equipment Install, Wire & Inspect |  | 10d | 2026-04-09 | 2026-04-23 | 144, 15, 106 |  |  | 39.5d | 15d |  |
| 135 | 3.16.4 | Install and Wire Panels |  | 15d | 2026-04-23 | 2026-05-14 | 112 |  |  | 24.5d | 0d |  |
| 136 | 3.16.5 | Permanent Power On | milestone | 0d | 2026-05-14 | 2026-05-14 | 134, 135, 15 |  |  | 24.5d | 0d |  |
| 137 | 3.16.6 | FRAGNET - RFI 35 - Light Fixture Mounting Height Clarification Submitted/Closed, |  | 3d | 2026-03-13 A | 2026-03-17 A |  | 100% |  |  |  | start no earlier than 2026-03-13 |
| 138 | 3.16.7 | Electric Lights, Devices and Trim |  | 55d | 2026-04-09 | 2026-06-26 | 133SS+10d, 17, 137, 106 |  |  | 7.5d | 0d |  |
| 139 | 3.16.8 | Fire Alarm System |  | 3d | 2026-05-14 | 2026-05-19 | 129, 19, 112 |  |  | 34.5d | 27d |  |
| 140 | 3.16.9 | Electrical Commissioning |  | 5d | 2026-06-26 | 2026-07-06 | 132, 133, 135, 138, 139, 137 |  |  | 7.5d |  |  |

| ID | WBS | Task | Type | Duration | Start | Finish | Predecessors | Complete | Remaining | Total slack | Free slack | Constraint | Resources | Work | Actual work |
| --- | --- | --- | --- | --- | --- | --- | --- | --- | --- | --- | --- | --- | --- | --- | --- |
| 141 | 4 | **BUILDING A** |  | 151d | 2026-01-26 A | 2026-08-26 |  | 19% | 121.96d | -38d | 0d |  |  | 248h | 240h |
| 142 | 4.1 | BLDG A Foundation Excavation |  | 24d | 2026-01-26 A | 2026-02-26 A | 81, 87SS+10d, 4, 40, 84 | 100% |  |  |  |  | ATD | 192h | 192h |
| 143 | 4.2 | FRAGNET - BLDG A Footing Seepage Bed Over Ex. |  | 1d | 2026-02-02 A | 2026-02-02 A | 142 | 100% |  |  |  |  |  |  |  |
| 144 | 4.3 | BLDG A - Interoir Backfill Foundations |  | 2d | 2026-02-26 A | 2026-03-03 A | 89, 165, 142 | 100% |  |  |  |  | ATD | 16h | 16h |
| 145 | 4.4 | **FRAGNET - BLDG A Seepage Bed Pad Over Ex.** |  | 11d | 2026-02-26 A | 2026-03-12 A |  | 100% |  |  |  |  |  |  |  |
| 146 | 4.4.1 | FRAGNET -Proposed direction received from Owner to perform BLDG A Seepage Bed Pad Over Ex. |  | 1d | 2026-02-26 A | 2026-02-26 A | 61SS, 60SS | 100% |  |  |  |  |  |  |  |
| 147 | 4.4.2 | FRAGNET - Prepare and Submit Pricing for Approval |  | 8d | 2026-02-27 A | 2026-03-10 A | 155 | 100% |  |  |  |  |  |  |  |
| 148 | 4.4.3 | FRAGNET - Owner Issued CCD 06 on Seepage Bed Cost Impact |  | 1d | 2026-03-09 A | 2026-03-09 A |  | 100% |  |  |  |  |  |  |  |
| 149 | 4.4.4 | FRAGNET - Mobilize Crew for BLDG A Seepage Bed Pad Over Ex. |  | 1d | 2026-03-10 A | 2026-03-10 A | 148 | 100% |  |  |  |  |  |  |  |
| 150 | 4.4.5 | FRAGNET - Start BLDG A Seepage Bed Pad Over Ex. |  | 1d | 2026-03-11 A | 2026-03-11 A | 165, 144, 149 | 100% |  |  |  |  |  |  |  |
| 151 | 4.4.6 | FRAGNET - Finish BLDG A Seepage Bed Pad Over Ex. |  | 1d | 2026-03-12 A | 2026-03-12 A | 150 | 100% |  |  |  |  |  |  |  |
| 152 | 4.5 | BLDG A - Exterior Backfill Foundations |  | 2d | 2026-03-10 A | 2026-03-11 A | 142, 166, 82, 167 | 100% |  |  |  |  | ATD | 16h | 16h |
| 153 | 4.6 | BLDG A SOG Rough Grade Prep |  | 2d | 2026-03-18 A | 2026-03-19 A | 144, 204SS, 145, 150 | 100% |  |  |  |  | ATD | 16h | 16h |
| 154 | 4.7 | **FRAGNET - BLDG A Soft Spot Over Ex** |  | 30d | 2026-02-26 A | 2026-04-08 |  | 56% | 13.27d | -7d | 0d |  |  |  |  |
| 155 | 4.7.1 | FRAGNET - Proposed direction received from Owner to perform BLDG A Soft Spot Repairs Using Only Pit Run |  | 1d | 2026-02-26 A | 2026-02-26 A | 61SS, 60SS | 100% |  |  |  |  |  |  |  |
| 156 | 4.7.2 | FRAGNET - Prepare and Submit Pricing for Approval |  | 13d | 2026-02-27 A | 2026-03-17 A | 155 | 100% |  |  |  |  |  |  |  |
| 157 | 4.7.3 | FRAGNET - Owner Issued CCD 07 Directive for Driveisle and Soft Spots |  | 1d | 2026-03-09 A | 2026-03-09 A |  | 100% |  |  |  |  |  |  |  |
| 158 | 4.7.4 | FRAGNET - Mobilize Crew, SOG Rough Grade Prep, Scarify, Air Dry Pad A |  | 5d | 2026-03-13 A | 2026-03-19 A | 157, 151, 148 | 100% |  |  |  |  |  |  |  |
| 159 | 4.7.5 | FRAGNET - Air Dry Pad A, Re-Prep, Proof Roll to Idendify Soft Spots |  | 7d | 2026-03-20 A | 2026-03-30 | 157, 151, 148, 158 | 25% | 5.25d | -38d | 0d |  |  |  |  |
| 160 | 4.7.6 | (IF REQUIRED, TBD) FRAGNET - Start Soft Spot Repairs |  | 1d | 2026-03-31 | 2026-03-31 | 157, 151, 148, 153, 159 |  |  | -38d | 0d |  |  |  |  |
| 161 | 4.7.7 | (IF REQUIRED, TBD) FRAGNET - Test and Review Compaction Results for Soft Spot - If Approved, Proceed with Direction Further |  | 1d | 2026-04-01 | 2026-04-01 | 160, 159, 158 |  |  | -38d | 0d |  |  |  |  |
| 162 | 4.7.8 | (IF REQUIRED, TBD) FRAGNET - Soft Spot Repairs East Area |  | 5d | 2026-04-02 | 2026-04-08 | 161 |  |  | -32d | 0d |  |  |  |  |
| 163 | 4.7.9 | (IF REQUIRED, TBD) FRAGNET - Soft Spot Repairs West Area |  | 5d | 2026-04-02 | 2026-04-08 | 161, 61SS, 60SS |  |  | -38d | 0d |  |  |  |  |
| 164 | 4.8 | **CONCRETE WORK** |  | 56d | 2026-02-04 A | 2026-04-22 |  | 71% | 16.21d | 15d |  |  |  | 8h |  |
| 165 | 4.8.1 | BLDG A Foundation |  | 18d | 2026-02-04 A | 2026-02-27 A | 142SS+2d, 48, 49, 143, 25FF, 26FF-2d | 100% |  |  |  | start no earlier than 2026-01-05 |  |  |  |
| 166 | 4.8.2 | BLDG A Dampproofing |  | 4d | 2026-02-16 A | 2026-03-03 A | 165, 142 | 100% |  |  |  |  |  |  |  |
| 167 | 4.8.3 | BLDG A Exterior Footing Insulation |  | 5d | 2026-02-23 A | 2026-02-27 A | 166 | 100% |  |  |  |  |  |  |  |
| 168 | 4.8.4 | BLDG A SOG Fine Prep |  | 1d | 2026-04-07 | 2026-04-07 | 144, 204SS, 145, 150, 212, 159 |  |  | -37d | 0d |  | ATD | 8h |  |
| 169 | 4.8.5 | BLDG A Slab On Grade (East) |  | 3d | 2026-04-08 | 2026-04-10 | 153SS, 212, 168 |  |  | -37d | 0d |  |  |  |  |
| 170 | 4.8.6 | BLDG A Slab On Grade (Center) |  | 3d | 2026-04-13 | 2026-04-15 | 169 |  |  | -37d | 0d |  |  |  |  |
| 171 | 4.8.7 | BLDG A Slab On Grade (West) |  | 4d | 2026-04-17 | 2026-04-22 | 165, 168, 64, 150, 151, 163, 204, 153, 162, 170 |  |  | -38d | 0d |  |  |  |  |
| 172 | 4.8.8 | BLDG A Slab On Grade Complete | milestone | 0d | 2026-04-22 | 2026-04-22 | 171 |  |  | 15d | 0d |  |  |  |  |

Notes:
- 165: Two weather delays impacted the foundations' pours.

| ID | WBS | Task | Type | Duration | Start | Finish | Predecessors | Total slack | Free slack |
| --- | --- | --- | --- | --- | --- | --- | --- | --- | --- |
| 173 | 4.9 | **STEEL AND METALS** |  | 67d | 2026-04-29 | 2026-08-03 |  | -38d | 0d |
| 174 | 4.9.1 | Frame & Panel Load Bearing & Shear Walls (JANUS) |  | 25d | 2026-04-29 | 2026-06-03 | 171SS+8d, 14 | -38d | 0d |
| 175 | 4.9.2 | Frame & Panel Partition & Corridor Walls (JANUS) |  | 15d | 2026-07-14 | 2026-08-03 | 174, 213, 129 | -26d | 0d |
| 176 | 4.9.3 | Canopy Install |  | 8d | 2026-06-04 | 2026-06-15 | 174, 180 | 13d |  |
| 177 | 4.10 | **WOOD & FRP** |  | 5d | 2026-06-25 | 2026-07-01 |  | 1d |  |
| 178 | 4.10.1 | Misc Finish Carpentry |  | 5d | 2026-06-25 | 2026-07-01 | 192 | 1d |  |
| 179 | 4.11 | **ROOF & SIDING** |  | 35d | 2026-05-20 | 2026-07-09 |  | -28d | 0d |
| 180 | 4.11.1 | Exterior Sheathing, Weather Barrier & Rigid Insulation - Building A |  | 10d | 2026-05-20 | 2026-06-03 | 174FS-10d | -13d | 0d |
| 181 | 4.11.2 | Exterior Sheathing, Weather Barrier & Rigid Insulation - Building A |  | 10d | 2026-05-28 | 2026-06-10 | 180FS-5d | -13d | 0d |
| 182 | 4.11.3 | Rigid Insulation Behind Metal Panels |  | 3d | 2026-06-11 | 2026-06-15 | 181 | -9d | 0d |
| 183 | 4.11.4 | Rigid Insulation Behind CMU |  | 5d | 2026-06-11 | 2026-06-17 | 181 | -13d | 0d |
| 184 | 4.11.5 | CMU Veneer |  | 15d | 2026-06-18 | 2026-07-09 | 180, 181, 183 | -13d | 0d |
| 185 | 4.11.6 | Exterior Metal Panels (JANUS) |  | 10d | 2026-06-22 | 2026-07-06 | 184SS+2d, 180, 182 | -13d | 0d |
| 186 | 4.11.7 | Install Roof & Roof Insulation (JANUS) |  | 5d | 2026-06-04 | 2026-06-10 | 174 | -38d | 0d |
| 187 | 4.11.8 | BLDG A Roofing Complete | milestone | 0d | 2026-06-10 | 2026-06-10 | 186 | -31d | 0d |
| 188 | 4.12 | **DOORS & WINDOWS** |  | 5d | 2026-08-04 | 2026-08-10 |  | -26d | 0d |
| 189 | 4.12.1 | F&I Storage Unit Doors (JANUS) |  | 5d | 2026-08-04 | 2026-08-10 | 175 | -26d | 0d |
| 190 | 4.12.2 | F&I HM Doors and Hardware (JANUS) |  | 5d | 2026-08-04 | 2026-08-10 | 189SS, 192 | -26d | 0d |
| 191 | 4.13 | **FINISHES** |  | 30d | 2026-06-11 | 2026-07-23 |  | -16d | 0d |
| 192 | 4.13.1 | Install Gypsum Board |  | 10d | 2026-06-11 | 2026-06-24 | 174, 186, 180 | -16d | 0d |
| 193 | 4.13.2 | Painting |  | 10d | 2026-06-25 | 2026-07-09 | 192 | -16d | 0d |
| 194 | 4.13.3 | Flooring Polished Conc. |  | 5d | 2026-07-10 | 2026-07-16 | 192, 193 | -16d | 0d |
| 195 | 4.13.4 | FRP & Vinyl Base |  | 5d | 2026-07-17 | 2026-07-23 | 193, 194 | -16d | 0d |
| 196 | 4.14 | **SPECIALTIES** |  | 22d | 2026-06-25 | 2026-07-27 |  | -16d | 0d |
| 197 | 4.14.1 | Install Misc Equipment & Lockers |  | 20d | 2026-06-25 | 2026-07-23 | 192 | -14d | 0d |
| 198 | 4.14.2 | Bathroom Accessories- Building A |  | 2d | 2026-07-24 | 2026-07-27 | 195 | -16d | 0d |
| 199 | 4.14.3 | Building Interior Signage |  | 3d | 2026-07-10 | 2026-07-14 | 193SS+10d | -7d | 0d |

| ID | WBS | Task | Type | Duration | Start | Finish | Predecessors | Complete | Remaining | Total slack | Free slack |
| --- | --- | --- | --- | --- | --- | --- | --- | --- | --- | --- | --- |
| 200 | 4.15 | **FIRE SPRINKLERS** |  | 30d | 2026-06-11 | 2026-07-23 |  |  |  | -14d | 0d |
| 201 | 4.15.1 | Fire Sprinkler System Rough In |  | 15d | 2026-06-11 | 2026-07-01 | 186 |  |  | -14d | 0d |
| 202 | 4.15.2 | Fire Sprinkler System Trim Out |  | 15d | 2026-07-02 | 2026-07-23 | 201 |  |  | -14d | 0d |
| 203 | 4.16 | **PLUMBING** |  | 102d | 2026-03-09 A | 2026-07-30 |  | 10% | 91.54d | -19d | 0d |
| 204 | 4.16.1 | Plumbing Rough-in Underground |  | 4d | 2026-03-09 A | 2026-03-12 A | 144 | 100% |  |  |  |
| 205 | 4.16.2 | Drains, Water, Sewer Lines |  | 15d | 2026-06-11 | 2026-07-01 | 186 |  |  | -19d | 0d |
| 206 | 4.16.3 | Bathroom Fixtures- Building A |  | 10d | 2026-07-02 | 2026-07-16 | 192, 205 |  |  | -19d | 0d |
| 207 | 4.16.4 | Other Plumbing Fixtures |  | 10d | 2026-07-17 | 2026-07-30 | 206 |  |  | -19d | 0d |
| 208 | 4.17 | **HVAC** |  | 30d | 2026-06-11 | 2026-07-23 |  |  |  | -14d | 0d |
| 209 | 4.17.1 | HVAC Installation |  | 20d | 2026-06-11 | 2026-07-09 | 186, 187 |  |  | -14d | 0d |
| 210 | 4.17.2 | HVAC Commisioning - Building A |  | 10d | 2026-07-10 | 2026-07-23 | 209, 136 |  |  | -14d | 0d |
| 211 | 4.18 | **ELECTRICAL** |  | 105d | 2026-03-31 | 2026-08-26 |  |  |  | -38d | 0d |
| 212 | 4.18.1 | Building Rough-in Underground |  | 5d | 2026-03-31 | 2026-04-06 | 144, 159 |  |  | -37d | 0d |
| 213 | 4.18.2 | Electrical Rough-In |  | 25d | 2026-06-08 | 2026-07-13 | 186SS+2d |  |  | -38d | 0d |
| 214 | 4.18.3 | New Service Equipment Install, Wire & Inspect |  | 10d | 2026-06-11 | 2026-06-24 | 144, 15, 213SS, 186 |  |  | 6d |  |
| 215 | 4.18.4 | Install and Wire Panels |  | 15d | 2026-06-25 | 2026-07-16 | 192 |  |  | -14d | 0d |
| 216 | 4.18.5 | Permanent Power On- Building A | milestone | 0d | 2026-07-16 | 2026-07-16 | 214, 215, 15 |  |  | -9d | 0d |
| 217 | 4.18.6 | Electric Lights, Devices and Trim |  | 42d | 2026-06-22 | 2026-08-19 | 213SS+10d, 186, 187, 17 |  |  | -38d | 0d |
| 218 | 4.18.7 | Fire Alarm System |  | 5d | 2026-07-10 | 2026-07-16 | 192, 209, 19 |  |  | -14d | 0d |
| 219 | 4.18.8 | Electrical Commissioning |  | 5d | 2026-08-20 | 2026-08-26 | 212, 213, 215, 217, 218 |  |  | -38d | 0d |
